# Conveyor Belt Plan

Schedule from MS Project, 2025-01-01 to 2025-10-21, status date 2025-02-28, costs in $, A marks actual dates.

## Calendars

- Seven-day Calendar: Mon-Sun 08:00-12:00, 13:00-17:00.

## Resources

| Resource | Rate |
| --- | --- |
| Design | 185 |
| Development | 115 |
| Documentation | 75 |
| Assembly/Test | 65 |
| Purchasing | 50 |
| External Test | 140 |

## Schedule

| ID | Task | Duration | Start | Finish | Predecessors | Complete | Remaining | Baseline start | Baseline finish | Baseline duration | Total slack | Free slack | Constraint | Resources | Work | Actual work | Cost | Baseline cost | Actual cost |
| --- | --- | --- | --- | --- | --- | --- | --- | --- | --- | --- | --- | --- | --- | --- | --- | --- | --- | --- | --- |
| 1 | System architecture | 40d | 2025-01-01 A | 2025-02-09 A |  | 100% |  | 2025-01-01 | 2025-02-09 | 40d |  |  |  | Design | 320h | 320h | 59,200 | 59,200 | 59,200 |
| 2 | Hardware specifications | 64d | 2025-02-10 A | 2025-04-14 | 1 | 30% | 45d | 2025-02-10 | 2025-03-31 | 50d | 0d |  | must start on 2025-02-10 | Development; Design | 1024h | 304h | 153,600 | 120,000 | 45,600 |
| 3 | Kernel specifications | 19d | 2025-02-10 A | 2025-02-28 A | 1 | 100% |  | 2025-02-10 | 2025-03-01 | 20d |  |  | must start on 2025-02-10 | Design | 152h | 152h | 28,120 | 29,600 | 28,120 |
| 4 | Utilities Specification | 19d | 2025-02-10 A | 2025-02-28 A | 1 | 100% |  | 2025-02-10 | 2025-03-06 | 25d |  |  | must start on 2025-02-10 | Development; Design | 304h | 304h | 45,600 | 60,000 | 45,600 |
| 5 | Hardware Design | 35d | 2025-04-15 | 2025-05-19 | 2 |  |  | 2025-04-01 | 2025-05-05 | 35d | 41d | 0d |  | Design [200%]; Development [200%] | 1120h |  | 168,000 | 168,000 |  |
| 6 | Disk drivers | 90d | 2025-03-01 | 2025-05-29 | 3 |  |  | 2025-03-02 | 2025-05-30 | 90d | 41d |  |  | Assembly/Test; Development | 960h |  | 74,400 | 74,400 |  |
| 7 | Memory management | 25d | 2025-05-26 | 2025-06-20 | 3 |  |  | 2025-06-05 | 2025-06-29 | 25d | 19.33d |  |  | Development [300%] | 600h |  | 69,000 | 69,000 |  |
| 8 | Operating system documentation | 15d | 2025-03-01 | 2025-03-15 | 3 |  |  | 2025-03-02 | 2025-03-16 | 15d | 116d |  |  | Design; Documentation | 240h |  | 31,200 | 31,200 |  |
| 9 | Routine utilities | 20d | 2025-06-20 | 2025-07-09 | 4 |  |  | 2025-05-06 | 2025-05-25 | 20d | 0d |  |  | Development [200%] | 320h |  | 36,800 | 36,800 |  |
| 10 | Complex utilities | 90d | 2025-03-01 | 2025-05-29 | 4 |  |  | 2025-03-07 | 2025-06-04 | 90d | 41d |  |  | Development | 720h |  | 82,800 | 82,800 |  |
| 11 | Utilities documentation | 10d | 2025-03-16 | 2025-03-25 | 4 |  |  | 2025-03-17 | 2025-03-26 | 10d | 106d |  |  | Design; Documentation | 160h |  | 20,800 | 20,800 |  |
| 12 | Hardware documentation | 10d | 2025-05-20 | 2025-05-29 | 5 |  |  | 2025-05-06 | 2025-05-15 | 10d | 41d |  |  | Design; Documentation | 160h |  | 20,800 | 20,800 |  |
| 13 | Integration first phase | 23.33d | 2025-07-10 | 2025-08-02 | 6, 7, 8, 9, 10, 11, 12 |  |  | 2025-06-30 | 2025-07-23 | 23.33d | 0d |  |  | Assembly/Test; Development [200%]; External Test | 560h |  | 59,733.33 | 59,733.33 |  |
| 14 | Prototypes | 44d | 2025-08-02 | 2025-09-15 | 13 |  |  | 2025-07-23 | 2025-09-05 | 44d | 0d |  |  | Assembly/Test; Development | 1040h |  | 108,720 | 108,720 |  |
| 15 | Serial I/O drivers | 42.5d | 2025-08-02 | 2025-09-13 | 13 |  |  | 2025-07-23 | 2025-09-03 | 42.5d | 1.5d |  |  | Development [200%] | 680h |  | 78,200 | 78,200 |  |
| 16 | System hard/software test | 5d | 2025-09-15 | 2025-09-20 | 14, 15 |  |  | 2025-09-05 | 2025-09-10 | 5d | 0d |  |  | Assembly/Test; External Test | 160h |  | 12,100 | 12,100 |  |
| 17 | Order printed circuit boards | 5d | 2025-09-20 | 2025-09-25 | 16 |  |  | 2025-09-10 | 2025-09-15 | 5d | 0d |  |  | Purchasing | 40h |  | 2,000 | 2,000 |  |
| 18 | Network interface | 25d | 2025-09-20 | 2025-10-15 | 16 |  |  | 2025-09-10 | 2025-10-05 | 25d | 0d |  |  | Development [50%] | 100h |  | 11,500 | 11,500 |  |
| 19 | Shell | 25d | 2025-09-20 | 2025-10-15 | 16 |  |  | 2025-09-10 | 2025-10-05 | 25d | 0d |  |  | Development [50%] | 100h |  | 11,500 | 11,500 |  |
| 20 | Project documentation | 20d | 2025-09-20 | 2025-10-10 | 16 |  |  | 2025-09-10 | 2025-09-30 | 20d | 5d |  |  | Development; Documentation | 320h |  | 30,400 | 30,400 |  |
| 21 | Assemble preproduction | 15d | 2025-09-30 | 2025-10-15 | 17FS+5d |  |  | 2025-09-20 | 2025-10-05 | 15d | 0d |  |  | Assembly/Test; Development | 240h |  | 21,600 | 21,600 |  |
| 22 | Integrated acceptance test | 6.67d | 2025-10-15 | 2025-10-21 | 18, 19, 20, 21 |  |  | 2025-10-05 | 2025-10-11 | 6.67d | 0d |  |  | Assembly/Test; Development [200%] | 229.67h |  | 24,161.67 | 24,161.67 |  |
