# Conveyor Belt Plan

Schedule from MS Project, 2025-01-01 to 2025-09-01, status date 2025-02-28, costs in $, A marks actual dates.

## Calendars

- Seven-day Calendar: Mon-Sun 08:00-12:00, 13:00-17:00.

## Resources

| Resource | Rate |
| --- | --- |
| Design | 185 |
| Development | 115 |
| Documentation | 75 |
| Assembly/Test | 65 |
| Purchasing | 50 |
| External Test | 140 |
| External Development | 190 |

## Schedule

| ID | Task | Duration | Start | Finish | Predecessors | Complete | Remaining | Baseline start | Baseline finish | Baseline duration | Total slack | Free slack | Constraint | Resources | Work | Actual work | Cost | Baseline cost | Actual cost |
| --- | --- | --- | --- | --- | --- | --- | --- | --- | --- | --- | --- | --- | --- | --- | --- | --- | --- | --- | --- |
| 1 | System architecture | 40d | 2025-01-01 A | 2025-02-09 A |  | 100% |  | 2025-01-01 | 2025-02-09 | 40d |  |  |  | Design | 320h | 320h | 59,200 | 59,200 | 59,200 |
| 2 | Hardware specifications | 64d | 2025-02-10 A | 2025-04-14 | 1 | 30% | 45d | 2025-02-10 | 2025-03-31 | 50d | 0d |  | must start on 2025-02-10 | Development; Design | 1024h | 304h | 153,600 | 120,000 | 45,600 |
| 3 | Kernel specifications | 19d | 2025-02-10 A | 2025-02-28 A | 1 | 100% |  | 2025-02-10 | 2025-03-01 | 20d |  |  | must start on 2025-02-10 | Design | 152h | 152h | 28,120 | 29,600 | 28,120 |
| 4 | Utilities Specification | 19d | 2025-02-10 A | 2025-02-28 A | 1 | 100% |  | 2025-02-10 | 2025-03-06 | 25d |  |  | must start on 2025-02-10 | Development; Design | 304h | 304h | 45,600 | 60,000 | 45,600 |
| 5 | Hardware Design | 17.5d | 2025-04-15 | 2025-05-02 | 2 |  |  | 2025-04-01 | 2025-04-18 | 17.5d | 6.5d | 0d |  | Design [200%]; Development [200%] | 1120h |  | 210,000 | 210,000 |  |
| 6 | Disk drivers | 45d | 2025-03-01 | 2025-04-14 | 3 |  |  | 2025-04-27 | 2025-06-10 | 45d | 34d |  |  | Assembly/Test; Development [50%]; External Test; External Development [200%] | 1440h |  | 229,500 | 229,500 |  |
| 7 | Memory management | 14.06d | 2025-05-04 | 2025-05-18 | 3 |  |  | 2025-04-20 | 2025-05-04 | 14.06d | 0.94d |  |  | Development; External Development [400%] | 450h |  | 85,781.25 | 85,781.25 |  |
| 8 | Operating system documentation | 15d | 2025-03-01 | 2025-03-15 | 3 |  |  | 2025-03-02 | 2025-03-16 | 15d | 64d |  |  | Design; Documentation | 240h |  | 31,200 | 31,200 |  |
| 9 | Routine utilities | 15d | 2025-05-04 | 2025-05-18 | 4 |  |  | 2025-06-09 | 2025-06-24 | 15d | 0d |  |  | Development [200%] | 240h |  | 27,600 | 27,600 |  |
| 10 | Complex utilities | 45d | 2025-03-01 | 2025-04-14 | 4 |  |  | 2025-05-04 | 2025-06-17 | 45d | 34d |  |  | Development; External Development | 720h |  | 109,800 | 109,800 |  |
| 11 | Utilities documentation | 10d | 2025-03-16 | 2025-03-25 | 4 |  |  | 2025-03-17 | 2025-03-26 | 10d | 54d |  |  | Design; Documentation | 160h |  | 20,800 | 20,800 |  |
| 12 | Hardware documentation | 10d | 2025-05-02 | 2025-05-12 | 5 |  |  | 2025-04-18 | 2025-04-28 | 10d | 6.5d |  |  | Design; Documentation | 160h |  | 20,800 | 20,800 |  |
| 13 | Integration first phase | 23.33d | 2025-05-19 | 2025-06-11 | 6, 7, 8, 9, 10, 11, 12 |  |  | 2025-06-24 | 2025-07-17 | 23.33d | 0d |  |  | Assembly/Test; Development [200%]; External Test | 560h |  | 59,733.33 | 59,733.33 |  |
| 14 | Prototypes | 43d | 2025-06-11 | 2025-07-24 | 13 |  |  | 2025-07-17 | 2025-08-29 | 43d | 0d |  |  | Assembly/Test; Development; External Development; External Test | 1040h |  | 120,000 | 120,000 |  |
| 15 | Serial I/O drivers | 42.5d | 2025-06-11 | 2025-07-23 | 13 |  |  | 2025-07-17 | 2025-08-29 | 42.5d | 0.5d |  |  | Development [200%] | 680h |  | 78,200 | 78,200 |  |
| 16 | System hard/software test | 5d | 2025-07-24 | 2025-07-29 | 14, 15 |  |  | 2025-08-29 | 2025-09-03 | 5d | 0d |  |  | Assembly/Test; External Test | 160h |  | 20,500 | 20,500 |  |
| 17 | Order printed circuit boards | 5d | 2025-07-29 | 2025-08-03 | 16 |  |  | 2025-09-03 | 2025-09-08 | 5d | 5d | 0d |  | Purchasing | 40h |  | 2,000 | 2,000 |  |
| 18 | Network interface | 25d | 2025-07-29 | 2025-08-23 | 16 |  |  | 2025-09-03 | 2025-09-28 | 25d | 0d |  |  | Development [50%] | 100h |  | 11,500 | 11,500 |  |
| 19 | Shell | 25d | 2025-07-29 | 2025-08-23 | 16 |  |  | 2025-09-03 | 2025-09-28 | 25d | 0d |  |  | Development [50%] | 100h |  | 11,500 | 11,500 |  |
| 20 | Project documentation | 20d | 2025-07-29 | 2025-08-18 | 16 |  |  | 2025-09-03 | 2025-09-23 | 20d | 5d |  |  | Development; Documentation | 320h |  | 30,400 | 30,400 |  |
| 21 | Assemble preproduction | 10d | 2025-08-08 | 2025-08-18 | 17FS+5d |  |  | 2025-09-13 | 2025-09-23 | 10d | 5d |  |  | Assembly/Test; Development; External Test | 240h |  | 25,600 | 25,600 |  |
| 22 | Integrated acceptance test | 9.32d | 2025-08-23 | 2025-09-01 | 18, 19, 20, 21 |  |  | 2025-09-28 | 2025-10-08 | 9.32d | 0d |  |  | Assembly/Test; Development [200%]; External Test | 320h |  | 38,477.5 | 38,477.5 |  |
